# NBSI 2017 s7

Schedule from MS Project, 2017-04-05 to 2018-04-18, status date 2017-09-30, costs in $, A marks actual dates.

## Calendars

- Standard: Mon-Fri 08:00-12:00, 13:00-17:00; Sat-Sun off. Exceptions (off unless hours are given): 2017-01-01 to 2020-01-01 (New Year's Day, recurring), 2017-05-29 to 2020-05-25 (Memorial Day, recurring), 2017-07-04 to 2020-07-04 (Independence Day, recurring), 2017-09-04 to 2020-09-07 (Labor Day, recurring), 2017-11-23 to 2020-11-26 (Thanksgiving Day, recurring), 2017-12-25 to 2020-12-25 (Christmas Day, recurring).

## Resources

| Resource | Rate |
| --- | --- |
| Business Analysis | 70 |
| Accounting | 50 |
| Customer Service | 20 |
| IT Operations | 40 |
| Network Engineering | 60 |
| Database Administration | 50 |
| Programming | 75 |
| Training | 30 |
| Quality Assurance | 50 |
| Purchasing | 45 |
| Test Engineering | 25 |
| Servers | 80000 |
| Software License Fees | 450000 |
| Shipping Fee | 2000 |

## Schedule

| ID | WBS | Task | Duration | Start | Finish | Predecessors | Complete | Remaining | Baseline start | Baseline finish | Baseline duration | Total slack | Free slack | Constraint | Resources | Work | Actual work | Cost | Baseline cost | Actual cost |
| --- | --- | --- | --- | --- | --- | --- | --- | --- | --- | --- | --- | --- | --- | --- | --- | --- | --- | --- | --- | --- |
| 1 | 1 | Review Billing System Requirements | 24d | 2017-04-05 A | 2017-05-08 A |  | 100% |  | 2017-04-03 | 2017-04-28 | 20d |  |  |  | Business Analysis [300%]; Accounting [200%]; Customer Service [200%]; Database Administration; IT Operations; Network Engineering; Programming; Quality Assurance | 2304h | 2304h | 120,000 | 100,000 | 120,000 |
| 2 | 2 | **Design** | 191d | 2017-05-09 A | 2018-02-07 |  | 67% | 63.14d | 2017-05-01 | 2017-12-21 | 165d | 15d |  |  |  | 7016h | 5016h | 375,680 | 378,600 | 270,480 |
| 3 | 2.1 | Prepare Server Specifications | 6d | 2017-05-11 A | 2017-05-18 A | 1 | 100% |  | 2017-05-01 | 2017-05-05 | 5d |  |  |  | Business Analysis; IT Operations; Database Administration | 144h | 144h | 7,680 | 6,400 | 7,680 |
| 4 | 2.2 | Prepare Billing Software Specifications | 28d | 2017-05-09 A | 2017-06-16 A | 1 | 100% |  | 2017-05-01 | 2017-06-19 | 35d |  |  |  | Business Analysis; Accounting [300%]; Customer Service [200%]; Database Administration; IT Operations; Network Engineering; Programming | 2240h | 2240h | 108,640 | 135,800 | 108,640 |
| 5 | 2.3 | Prepare Report Specifications | 47d | 2017-06-19 A | 2017-08-23 A | 1 | 100% |  | 2017-06-20 | 2017-08-15 | 40d |  |  |  | Business Analysis [200%]; Accounting; Customer Service; Database Administration; Programming [200%] | 2632h | 2632h | 154,160 | 131,200 | 154,160 |
| 6 | 2.4 | Prepare Revised Workflows | 30d | 2017-12-27 | 2018-02-07 | 1 |  |  | 2017-11-09 | 2017-12-21 | 30d | 0d |  |  | Business Analysis [300%]; Accounting; Customer Service; IT Operations | 1440h |  | 76,800 | 76,800 |  |
| 7 | 2.5 | Prepare Operations Procedures | 10d | 2017-12-12 | 2017-12-26 | 1 |  |  | 2017-06-20 | 2017-07-03 | 10d | 45d |  | start no earlier than 2017-09-30 | Business Analysis; Customer Service; IT Operations [200%]; Network Engineering; Database Administration; Programming | 560h |  | 28,400 | 28,400 |  |
| 8 | 3 | **Acquisition** | 36d | 2017-05-23 A | 2017-07-13 A |  | 100% |  | 2017-05-08 | 2017-07-18 | 50d |  |  |  |  | 264h | 264h | 544,760 | 545,800 | 544,760 |
| 9 | 3.1 | Purchase Servers | 6d | 2017-05-23 A | 2017-05-31 A | 3 | 100% |  | 2017-05-08 | 2017-05-12 | 5d |  |  |  | IT Operations; Purchasing; Servers; Shipping Fee | 96h | 96h | 86,080 | 83,400 | 86,080 |
| 10 | 3.2 | Purchase Software Licenses | 7d | 2017-07-05 A | 2017-07-13 A | 4 | 100% |  | 2017-07-05 | 2017-07-18 | 10d |  |  |  | Business Analysis; IT Operations; Purchasing; Software License Fees | 168h | 168h | 458,680 | 462,400 | 458,680 |
| 11 | 4 | **Hardware Installation** | 11d | 2017-07-06 A | 2017-07-20 A |  | 100% |  | 2017-07-05 | 2017-07-25 | 15d |  |  |  |  | 160h | 160h | 7,960 | 12,200 | 7,960 |
| 12 | 4.1 | Install Servers | 8d | 2017-07-06 A | 2017-07-17 A | 9FS+10d | 100% |  | 2017-07-05 | 2017-07-18 | 10d |  |  |  | IT Operations | 64h | 64h | 2,560 | 3,200 | 2,560 |
| 13 | 4.2 | Configure Network and Security | 3d | 2017-07-18 A | 2017-07-20 A | 12 | 100% |  | 2017-07-19 | 2017-07-25 | 5d |  |  |  | IT Operations; Network Engineering; Database Administration; Programming | 96h | 96h | 5,400 | 9,000 | 5,400 |
| 14 | 5 | **Software Installation** | 80d | 2017-07-21 A | 2017-11-10 |  | 60% | 32d | 2017-07-26 | 2017-10-11 | 55d | 50d |  |  |  | 3912h | 1512h | 224,760 | 171,600 | 86,760 |
| 15 | 5.1 | Setup User Accounts | 9d | 2017-07-21 A | 2017-08-02 A | 10FS+5d, 13 | 100% |  | 2017-07-26 | 2017-08-01 | 5d |  |  |  | Business Analysis; Accounting; Customer Service; IT Operations; Programming | 360h | 360h | 18,360 | 10,200 | 18,360 |
| 16 | 5.2 | Configure Merchant Account | 6d | 2017-08-07 A | 2017-08-14 A | 15 | 100% |  | 2017-08-16 | 2017-08-22 | 5d |  |  |  | Accounting; IT Operations; Programming | 144h | 144h | 7,920 | 6,600 | 7,920 |
| 17 | 5.3 | Connect Billing and Accounting Systems | 12d | 2017-08-17 A | 2017-09-01 A | 15 | 100% |  | 2017-08-02 | 2017-08-15 | 10d |  |  |  | Accounting; IT Operations; Programming | 288h | 288h | 15,840 | 13,200 | 15,840 |
| 18 | 5.4 | Import Billing Data | 18d | 2017-09-05 A | 2017-09-28 A | 17 | 100% |  | 2017-08-16 | 2017-09-13 | 20d |  |  |  | Business Analysis; Accounting; IT Operations; Programming [200%] | 720h | 720h | 44,640 | 49,600 | 44,640 |
| 19 | 5.5 | Develop Reports | 30d | 2017-10-02 | 2017-11-10 | 5, 18 |  |  | 2017-09-14 | 2017-10-11 | 20d | 50d | 10d | start no earlier than 2017-09-30 | Business Analysis [200%]; Accounting; Customer Service; IT Operations; Database Administration [200%]; Programming [300%] | 2400h |  | 138,000 | 92,000 |  |
| 20 | 6 | **Testing** | 75d | 2017-11-13 | 2018-02-28 |  |  |  | 2017-08-23 | 2018-01-15 | 100d | 0d |  |  |  | 3280h |  | 145,600 | 145,600 |  |
| 21 | 6.1 | Test Banking Interface | 5d | 2017-11-13 | 2017-11-17 | 16 |  |  | 2017-08-23 | 2017-08-29 | 5d | 45d | 5d | start no earlier than 2017-09-30 | Business Analysis; Accounting; IT Operations; Programming; Test Engineering [200%]; Quality Assurance | 280h |  | 13,400 | 13,400 |  |
| 22 | 6.2 | Test Accounting System Interface | 10d | 2017-11-13 | 2017-11-27 | 18 |  |  | 2017-10-12 | 2017-10-25 | 10d | 40d | 0d |  | Business Analysis; Accounting; IT Operations; Programming; Quality Assurance; Test Engineering [200%] | 560h |  | 26,800 | 26,800 |  |
| 23 | 6.3 | Test Reports | 10d | 2017-11-28 | 2017-12-11 | 19, 21, 22 |  |  | 2017-10-26 | 2017-11-08 | 10d | 40d |  |  | Business Analysis; Accounting; Customer Service; IT Operations; Database Administration; Programming; Quality Assurance; Test Engineering [400%] | 880h |  | 36,400 | 36,400 |  |
| 24 | 6.4 | Conduct User Acceptance Testing | 15d | 2018-02-08 | 2018-02-28 | 6, 23 |  |  | 2017-12-22 | 2018-01-15 | 15d | 0d |  |  | Business Analysis [200%]; Accounting; Customer Service; IT Operations; Database Administration; Programming; Quality Assurance [200%]; Test Engineering [400%] | 1560h |  | 69,000 | 69,000 |  |

| ID | WBS | Task | Duration | Start | Finish | Predecessors | Baseline start | Baseline finish | Baseline duration | Total slack | Resources | Work | Cost | Baseline cost |
| --- | --- | --- | --- | --- | --- | --- | --- | --- | --- | --- | --- | --- | --- | --- |
| 25 | 7 | **Deployment** | 35d | 2018-03-01 | 2018-04-18 |  | 2018-01-16 | 2018-03-05 | 35d | 0d |  | 2680h | 79,000 | 79,000 |
| 26 | 7.1 | Train Customer Service | 20d | 2018-03-01 | 2018-03-28 | 24 | 2018-01-16 | 2018-02-12 | 20d | 10d | Business Analysis; Training [200%]; Customer Service [1000%] | 2080h | 52,800 | 52,800 |
| 27 | 7.2 | Train Operations | 10d | 2018-03-29 | 2018-04-11 | 7, 24 | 2018-02-13 | 2018-02-26 | 10d | 0d | Training; IT Operations [200%] | 240h | 8,800 | 8,800 |
| 28 | 7.3 | Release System | 5d | 2018-04-12 | 2018-04-18 | 26, 27 | 2018-02-27 | 2018-03-05 | 5d | 0d | Business Analysis; Accounting; Customer Service [200%]; IT Operations; Network Engineering; Database Administration; Programming; Quality Assurance | 360h | 17,400 | 17,400 |
